# 2018_02_CredentialProvider

Schedule from MS Project, 2018-02-07 to 2018-02-26, 6 hours a day, A marks actual dates.

## Calendars

- Standard: Mon-Fri 08:00-16:00; Sat-Sun off.

## Resources

| Resource | Rate |
| --- | --- |
| Настя | 1 |
| Саша | 1 |

## Schedule

| ID | WBS | Task | Type | Duration | Start | Finish | Complete | Remaining | Actual finish | Resources | Work | Actual work | Cost | Actual cost |
| --- | --- | --- | --- | --- | --- | --- | --- | --- | --- | --- | --- | --- | --- | --- |
| 1 | 1 | **Credential Privider + Android app** |  | 18.67d | 2018-02-07 08:00 A | 2018-02-26 16:00 | 98% | 0.46d |  |  | 250h | 209.5h | 60.5 | 20 |
| 2 | 1.1 | **Research** |  | 1d | 2018-02-07 08:00 A | 2018-02-07 14:00 | 97% | 0.03d |  | Саша; Настя | 64h | 42.5h | 41.5 | 20 |
| 3 | 1.1.1 | **Изучение принципов работы WinLogon и Credential providers на примерах от MS и с Github** |  | 0.67d | 2018-02-07 08:00 A | 2018-02-07 12:00 | 99% | 0d |  | Настя; Саша | 20h | 12h | 8 |  |
| 4 | 1.1.1.1 | Разбор примера от MicroSoft | manual | 0.33d | 2018-02-07 08:00 A | 2018-02-07 10:00 A | 100% |  |  | Настя; Саша | 4h | 4h |  |  |
| 5 | 1.1.1.2 | Разбор примера от DiverOfDark с автологином при подключении конкретной флешки | manual | 0.67d | 2018-02-07 08:00 A | 2018-02-07 12:00 A | 100% |  |  | Настя; Саша | 8h | 8h |  |  |
| 6 | 1.1.2 | Изучение работы со службами | manual | 0.75d | 2018-02-07 08:00 A | 2018-02-07 12:30 A | 100% |  |  | Настя; Саша | 9h | 9h | 20 | 20 |
| 7 | 1.1.3 | Изучение инструментария для построения пользовательского интерфейса для Android App | manual | 0.58d | 2018-02-07 08:00 A | 2018-02-07 11:30 A | 100% |  |  | Настя; Саша | 7h | 7h |  |  |
| 8 | 1.1.4 | Изучение методов шифрования | manual | 0.25d | 2018-02-07 08:00 A | 2018-02-07 09:30 A | 100% |  |  | Настя; Саша | 3h | 3h |  |  |
| 9 | 1.1.5 | Протокол передачи данных | manual | 0.25d | 2018-02-07 08:00 A | 2018-02-07 09:30 | 50% | 0.12d |  | Настя; Саша | 3h | 1.5h | 1.5 |  |
| 10 | 1.1.6 | Написание тест кейсов | manual | 0.83d | 2018-02-07 08:00 A | 2018-02-07 13:00 A | 100% |  |  | Саша | 5h | 5h |  |  |
| 11 | 1.1.7 | Написание unit test | manual | 0.83d | 2018-02-07 08:00 A | 2018-02-07 13:00 A | 100% |  |  | Настя | 5h | 5h |  |  |
| 12 | 1.2 | **Implementation** |  | 1.33d? | 2018-02-07 08:00 A | 2018-02-07 16:00 | 99% | 0.01d? |  |  | 76h | 75h | 1 |  |
| 13 | 1.2.1 | **Credential Provider** |  | 0.83d | 2018-02-07 08:00 A | 2018-02-07 13:00 | 100% |  | 2018-02-08 12:00 |  | 48h | 48h |  |  |
| 14 | 1.2.1.1 | Разработка Credential Provider | manual | 1.67d | 2018-02-07 08:00 A | 2018-02-08 10:00 A | 100% |  |  | Настя; Саша | 20h | 20h |  |  |
| 15 | 1.2.1.2 | Обработка некоректных данных | manual | 1.33d | 2018-02-07 08:00 A | 2018-02-07 16:00 A | 100% |  |  | Настя | 8h | 8h |  |  |
| 16 | 1.2.1.3 | Обработка случая уже авторизованого пользователя | manual | 2d | 2018-02-07 08:00 A | 2018-02-08 12:00 A | 100% |  |  | Саша | 12h | 12h |  |  |
| 17 | 1.2.1.4 | Вход в систему при корректных данных | manual | 0.67d | 2018-02-07 08:00 A | 2018-02-07 12:00 A | 100% |  |  | Настя; Саша | 8h | 8h |  |  |
| 18 | 1.2.2 | Создание сетевого сервера | manual | 0.42d | 2018-02-07 08:00 A | 2018-02-07 10:30 | 80% | 0.08d |  | Настя; Саша | 5h | 4h | 1 |  |
| 19 | 1.2.3 | Создание прототипа клиента | manual | 0.33d | 2018-02-07 08:00 A | 2018-02-07 10:00 A | 100% |  |  | Настя; Саша | 4h | 4h |  |  |
| 20 | 1.2.4 | Временное подключение сервера для приема данных через сеть | manual | 0.83d | 2018-02-07 08:00 A | 2018-02-07 13:00 A | 100% |  |  | Настя; Саша | 10h | 10h |  |  |
| 21 | 1.2.5 | Создание прототипа сервиса(службы) | manual | 0.83d | 2018-02-07 08:00 A | 2018-02-07 13:00 A | 100% |  |  | Саша | 5h | 5h |  |  |
| 22 | 1.2.6 | Определение вида межроцессорной связи | manual | 0.67d | 2018-02-07 08:00 A | 2018-02-07 12:00 A | 100% |  |  | Настя | 4h | 4h |  |  |
| 23 | 1.3 | **Настройка соединения с Credential Privider** |  | 1d | 2018-02-07 08:00 A | 2018-02-07 14:00 | 98% | 0.02d |  | Саша | 62h | 47h | 15 |  |
| 24 | 1.3.1 | **Service** |  | 1d | 2018-02-07 08:00 A | 2018-02-07 14:00 A | 100% |  |  |  | 6h | 6h |  |  |
| 25 | 1.3.1.1 | Организация отправки данных от сервиса к Credential Provider | manual | 1d | 2018-02-07 08:00 A | 2018-02-07 14:00 A | 100% |  |  | Саша | 6h | 6h |  |  |

Notes:
- 1: Label in JIRA:...
- 15: сообщить пользователю о некоректных данных и дать возможность повторного входа
- 18: предусмотреть возможность подключения нескольких пользователей
- 19: Временная реализация на Windows
- 20: Сервер временно реализован в Credential Provider. Функционал будет перенесен в сервис

| ID | WBS | Task | Type | Duration | Start | Finish | Complete | Remaining | Actual finish | Resources | Work | Actual work | Cost |
| --- | --- | --- | --- | --- | --- | --- | --- | --- | --- | --- | --- | --- | --- |
| 26 | 1.3.2 | **Credential Provider** |  | 1d | 2018-02-07 08:00 A | 2018-02-07 14:00 A | 100% |  |  |  | 6h | 6h |  |
| 27 | 1.3.2.1 | Организация отправки данных от Credential Provider к сервису | manual | 1d | 2018-02-07 08:00 A | 2018-02-07 14:00 A | 100% |  |  | Саша | 6h | 6h |  |
| 28 | 1.3.3 | **Создание Android приложения** |  | 1.33d | 2018-02-07 08:00 A | 2018-02-07 16:00 | 99% | 0d |  | Настя | 14h | 6h | 8 |
| 29 | 1.3.3.1 | Реализация интерфейса | manual | 1d | 2018-02-07 08:00 A | 2018-02-07 14:00 A | 100% |  |  | Настя | 6h | 6h |  |
| 30 | 1.3.4 | **Настройка соединения с Android приложением** |  | 0.67d | 2018-02-07 08:00 A | 2018-02-07 12:00 | 97% | 0.02d |  |  | 30h | 29h | 1 |
| 31 | 1.3.4.1 | **Android** |  | 0.5d | 2018-02-07 08:00 A | 2018-02-07 11:00 | 91% | 0.05d |  |  | 11h | 10h | 1 |
| 32 | 1.3.4.1.1 | Организация передачи данных | manual | 0.83d | 2018-02-07 08:00 A | 2018-02-07 13:00 A | 100% |  |  | Настя | 5h | 5h |  |
| 33 | 1.3.4.1.2 | Шифрование данных | manual | 1d | 2018-02-07 08:00 A | 2018-02-07 14:00 | 83% | 0.17d |  | Настя | 6h | 5h | 1 |
| 34 | 1.3.4.2 | **Service** |  | 0.67d | 2018-02-07 08:00 A | 2018-02-07 12:00 | 100% |  | 2018-02-08 13:00 |  | 19h | 19h |  |
| 35 | 1.3.4.2.1 | Организация обратной связи в виде сообщений | manual | 1d | 2018-02-07 08:00 A | 2018-02-07 14:00 A | 100% |  |  | Саша | 6h | 6h |  |
| 36 | 1.3.4.2.2 | Реализация шифрования | manual | 2.17d | 2018-02-07 08:00 A | 2018-02-08 13:00 A | 100% |  |  | Саша | 13h | 13h |  |
| 37 | 1.4 | **Unit-testing** |  | 0.25d | 2018-02-07 08:00 A | 2018-02-07 09:30 | 57% | 0.11d |  |  | 7h | 4h | 3 |
| 38 | 1.4.1 | Тестирование программы | manual | 0.58d | 2018-02-07 08:00 A | 2018-02-07 11:30 | 57% | 0.25d |  | Настя; Саша | 7h | 4h | 3 |
| 39 | 1.5 | **Code review and refactoring** |  | 0.5d | 2018-02-07 08:00 A | 2018-02-07 11:00 | 100% |  | 2018-02-07 12:00 |  | 11h | 11h |  |
| 40 | 1.5.1 | Коррекция существующего кода | manual | 0.67d | 2018-02-07 08:00 A | 2018-02-07 12:00 A | 100% |  |  | Настя; Саша | 8h | 8h |  |
| 41 | 1.5.2 | Внедрение сервера в сервис с удаление его из Credential Provider | manual | 0.5d | 2018-02-07 08:00 A | 2018-02-07 11:00 A | 100% |  |  | Саша | 3h | 3h |  |
| 42 | 1.6 | **Testing** |  | 0.42d | 2018-02-07 08:00 A | 2018-02-07 10:30 A | 100% |  |  |  | 5h | 5h |  |
| 43 | 1.6.1 | Тестирование работы всех компонентов программы | manual | 0.42d | 2018-02-07 08:00 A | 2018-02-07 10:30 A | 100% |  |  | Настя; Саша | 5h | 5h |  |
| 44 | 1.7 | Bugfix | manual | 2.08d | 2018-02-07 08:00 A | 2018-02-08 12:30 A | 100% |  |  | Настя; Саша | 25h | 25h |  |
